# Предварительный план2007

Schedule from MS Project, 2013-04-22 to 2014-05-06.

## Calendars

- Стандартный: Mon-Fri 09:00-13:00, 14:00-18:00; Sat-Sun off. Exceptions (off unless hours are given): 2013-05-01 to 2013-05-05 (Первое мая), 2013-05-09 to 2013-05-12 (Девятое мая).

## Resources

| Resource |
| --- |
| Шилин Роман |
| Аналитик |
| Андрей Пирожков |
| Тугушев Илья |
| Денис Митавский |
| Java разработчик1 |
| Java разработчик2 |
| Валерий Мацукевич |
| Java разработчик3 |
| Java разработчик4 |
| WEB-дизайнер |
| Java разработчик |
| Андрей Цветков |
| Java разработчик5 |
| Тест Аналитик |
| Java разработчик6 |
| Тестировщик |
| Технический писатель |
| Технолог - администратор |
| Технический писатель2 |
| Системный аналитик1 |
| Системный аналитик2 |
| Системный аналитик3 |
| Системный аналитик4 |
| Владимир Панов |

## Schedule

| ID | WBS | Task | Type | Duration | Start | Finish | Predecessors | Total slack | Free slack | Constraint | Resources | Work |
| --- | --- | --- | --- | --- | --- | --- | --- | --- | --- | --- | --- | --- |
| 1 | 1 | **Разработка второй версии CM4/5** |  | 267d? | 2013-04-22 | 2014-05-06 |  | 0d |  |  |  | 26007.6h |
| 2 | 1.1 | Принято решение о разработке функциональных модулей | milestone | 0d | 2013-04-22 | 2013-04-22 |  | 0d |  | start no earlier than 2013-04-22 |  |  |
| 3 | 1.2 | Управление проектом |  | 267d | 2013-04-22 | 2014-05-06 | 2 | 0d |  |  | Шилин Роман | 2136h |
| 4 | 1.3 | Управление требованиями |  | 267d | 2013-04-22 | 2014-05-06 | 2 | 0d |  |  | Аналитик | 2136h |
| 5 | 1.4 | **Создание модуля "Делопроизводство" (документоориентированная среда)** |  | 143d? | 2013-04-22 | 2013-11-13 |  | 66d |  |  |  | 8808h |
| 6 | 1.4.1 | Первичные требования для создания модуля "канцелярия" подготовлены | milestone | 0d | 2013-04-22 | 2013-04-22 | 2 | 66d | 0d | finish no earlier than 2012-04-02 |  |  |
| 7 | 1.4.2 | **Апробация идей прототипа** |  | 9d | 2013-05-20 | 2013-05-31 |  | 82d |  |  |  | 48h |
| 8 | 1.4.2.1 | Пирожков доступен | milestone | 0d | 2013-05-31 | 2013-05-31 |  | 73d | 0d | start no earlier than 2013-05-31 |  |  |
| 9 | 1.4.2.2 | Проведение предварительных испытаний системы |  | 6d | 2013-05-20 | 2013-05-27 | 8FS-9d | 312d |  |  | Андрей Цветков | 48h |
| 10 | 1.4.3 | **Проектирование** |  | 75d | 2013-04-22 | 2013-08-09 | 6 | 66d | 0d |  |  | 2112h |
| 11 | 1.4.3.1 | **Определение структуры модуля Делопроизводство** |  | 59d | 2013-04-22 | 2013-07-18 |  | 66d | 0d |  |  | 1976h |
| 12 | 1.4.3.1.1 | Разбивка на слои |  | 5d | 2013-04-22 | 2013-04-26 |  | 66d | 0d |  | Денис Митавский [50%]; Андрей Пирожков [50%] | 40h |
| 13 | 1.4.3.1.2 | Конфигурации, загрузка и инициализация системы в базовой конфигурации |  | 5d | 2013-04-29 | 2013-05-08 | 12 | 66d | 0d |  | Андрей Цветков; Денис Митавский [50%] | 60h |
| 14 | 1.4.3.1.3 | Базовая конфигурация объектов системы |  | 5d | 2013-04-29 | 2013-05-08 | 12 | 1d | 0d |  | Андрей Пирожков [50%]; Валерий Мацукевич | 60h |
| 15 | 1.4.3.1.4 | **Подготовка к разработке модуля " Делопроизводство"** |  | 9d | 2013-05-13 | 2013-05-23 | 14 | 106d | 56d |  |  | 72h |
| 16 | 1.4.3.1.4.1 | Настройка среды разработки |  | 4d | 2013-05-13 | 2013-05-16 |  | 40d | 0d |  | Тугушев Илья | 32h |
| 17 | 1.4.3.1.4.2 | Поддержка UNIT-тестирования и интеграционного тестирования |  | 5d | 2013-05-17 | 2013-05-23 | 16 | 40d |  |  | Тугушев Илья | 40h |
| 18 | 1.4.3.1.5 | **Права доступа** |  | 20d | 2013-05-13 | 2013-06-07 |  | 67d |  |  |  | 396h |
| 19 | 1.4.3.1.5.1 | Финализация структуры хранения |  | 5d | 2013-05-13 | 2013-05-17 | 14 | 37d | 0d |  | Андрей Пирожков; Валерий Мацукевич | 80h |
| 20 | 1.4.3.1.5.2 | Модификация DAO для учета прав доступа |  | 5d | 2013-05-20 | 2013-05-24 | 14, 19 | 37d | 0d |  | Андрей Пирожков [50%]; Java разработчик | 60h |
| 21 | 1.4.3.1.5.3 | Скрипты по инициализации системы |  | 2d | 2013-05-27 | 2013-05-28 | 20 | 37d |  |  | Java разработчик | 16h |
| 22 | 1.4.3.1.5.4 | Workflow |  | 20d | 2013-05-13 | 2013-06-07 | 14, 8SF | 1d | 0d |  | Андрей Пирожков [50%]; Java разработчик | 240h |
| 23 | 1.4.3.1.6 | **Базовая имплементация слоя DAO** |  | 10d | 2013-05-13 | 2013-05-24 | 13 | 105d |  |  |  | 160h |
| 24 | 1.4.3.1.6.1 | Конфигурация слоя DAO |  | 5d | 2013-05-13 | 2013-05-17 |  | 39d | 0d |  | Денис Митавский; Андрей Цветков | 80h |
| 25 | 1.4.3.1.6.2 | Имплементация слоя DAO |  | 5d | 2013-05-20 | 2013-05-24 | 24 | 39d |  |  | Андрей Цветков; Денис Митавский | 80h |
| 26 | 1.4.3.1.7 | Базовая архитектура GUI (Vaadin) |  | 20d | 2013-05-13 | 2013-06-07 | 13 | 66d | 0d |  | Денис Митавский [50%]; Java разработчик | 240h |
| 27 | 1.4.3.1.8 | Поддержка механизма "логина" |  | 3d | 2013-06-10 | 2013-06-12 | 26 | 66d | 0d |  | Денис Митавский; Java разработчик | 48h |
| 28 | 1.4.3.1.9 | Веб-сервисы |  | 3d | 2013-06-10 | 2013-06-12 | 22 | 1d | 0d |  | Андрей Пирожков [50%]; Java разработчик | 36h |
| 29 | 1.4.3.1.10 | Списки |  | 10d | 2013-06-13 | 2013-06-26 | 27 | 66d | 0d |  | Денис Митавский; Валерий Мацукевич | 160h |
| 30 | 1.4.3.1.11 | Формы |  | 10d | 2013-06-27 | 2013-07-10 | 29 | 66d | 0d |  | Денис Митавский; Валерий Мацукевич | 160h |
| 31 | 1.4.3.1.12 | Вложения |  | 6d | 2013-07-11 | 2013-07-18 | 30 | 66d |  |  | Денис Митавский; Валерий Мацукевич | 96h |
| 32 | 1.4.3.1.13 | Поиск |  | 15d | 2013-06-13 | 2013-07-03 | 28 | 1d | 0d |  | Андрей Пирожков; Андрей Цветков | 240h |
| 33 | 1.4.3.1.14 | Полнотекстовый поиск |  | 10d | 2013-07-04 | 2013-07-17 | 32 | 1d |  |  | Андрей Пирожков; Андрей Цветков | 160h |
| 34 | 1.4.3.1.15 | Изучение возможностей CM4-клиента |  | 20d | 2013-05-31 | 2013-06-27 | 8 | 15d |  |  | Андрей Пирожков [10%]; Денис Митавский [10%]; Тугушев Илья [10%] | 48h |
| 35 | 1.4.3.2 | Описание структуры модуля " Делопроизводство" |  | 15d | 2013-07-19 | 2013-08-08 | 11 | 66d | 0d |  | Владимир Панов | 120h |
| 36 | 1.4.3.3 | Уточнение состава и сроков работ |  | 1d | 2013-08-09 | 2013-08-09 | 35 | 66d | 0d |  | Андрей Пирожков; Денис Митавский | 16h |

| ID | WBS | Task | Type | Duration | Start | Finish | Predecessors | Total slack | Free slack | Constraint | Resources | Work |
| --- | --- | --- | --- | --- | --- | --- | --- | --- | --- | --- | --- | --- |
| 37 | 1.4.4 | **Разработка** |  | 40d | 2013-08-12 | 2013-10-04 | 15 | 67d |  |  |  | 3680h |
| 38 | 1.4.4.1 | Контроль и корректировка технических решений "Архитектурный комитет" |  | 40d | 2013-08-12 | 2013-10-04 | 35, 36 | 67d | 0d |  | Тугушев Илья [20%]; Андрей Пирожков [20%]; Денис Митавский [20%]; WEB-дизайнер [20%]; Аналитик [20%]; Владимир Панов [50%] | 480h |
| 39 | 1.4.4.2 | **Разработка серверной логики модуля Делопроизводство** |  | 40d | 2013-08-12 | 2013-10-04 | 10 | 152d |  |  |  | 1600h |
| 40 | 1.4.4.2.1 | Разработка схем документов модуля Делопроизводство |  | 20d | 2013-08-12 | 2013-09-06 |  | 218d | 0d |  | Java разработчик2; Java разработчик | 320h |
| 41 | 1.4.4.2.2 | Разработка ЖЦ процессов модуля (WF) |  | 20d | 2013-09-09 | 2013-10-04 | 40 | 218d |  |  | Java разработчик2; Java разработчик | 320h |
| 42 | 1.4.4.2.3 | Разработка логики бизнес- действий модуля "Делопроизводство" |  | 40d | 2013-08-12 | 2013-10-04 |  | 218d |  |  | Java разработчик1; Java разработчик | 640h |
| 43 | 1.4.4.2.4 | Разработка процессов автоматизации для модуля "Делопроизводство" |  | 20d | 2013-08-12 | 2013-09-06 |  | 238d |  |  | Java разработчик | 160h |
| 44 | 1.4.4.2.5 | Разработка модели прав доступа (контекстные роли) |  | 20d | 2013-09-09 | 2013-10-04 | 40 | 218d |  |  | Java разработчик | 160h |
| 45 | 1.4.4.3 | **Разработка клиентской логики модуля "Делопроизводство"** |  | 40d | 2013-08-12 | 2013-10-04 | 10 | 152d |  |  |  | 640h |
| 46 | 1.4.4.3.1 | Разработка форм для работы с документами в GUI (настройки форм) |  | 20d | 2013-08-12 | 2013-09-06 |  | 238d |  |  | Java разработчик3 | 160h |
| 47 | 1.4.4.3.2 | Разработка структуры рабочего места |  | 20d | 2013-09-09 | 2013-10-04 | 40 | 218d |  |  | Java разработчик3 | 160h |
| 48 | 1.4.4.3.3 | Разработка специфичных для модуля форм элементов GUI |  | 40d | 2013-08-12 | 2013-10-04 |  | 218d |  |  | Java разработчик4 | 320h |
| 49 | 1.4.4.4 | **Подготовка работы со списками значений** |  | 40d | 2013-08-12 | 2013-10-04 |  | 152d |  |  |  | 640h |
| 50 | 1.4.4.4.1 | Разработка функционала учета организационно штатной структуры |  | 40d | 2013-08-12 | 2013-10-04 | 10 | 218d |  |  | Андрей Цветков | 320h |
| 51 | 1.4.4.4.2 | Разработка функционала с рубрикаторами (сложные справочники) |  | 20d | 2013-08-12 | 2013-09-06 | 10 | 218d | 0d |  | Валерий Мацукевич | 160h |
| 52 | 1.4.4.4.3 | Разработка функционала для работы с словарями данных (простые, линейные справочники) |  | 20d | 2013-09-09 | 2013-10-04 | 10, 51 | 218d |  |  | Валерий Мацукевич | 160h |
| 53 | 1.4.4.5 | Адаптация компонент сканирования (СПО) |  | 20d | 2013-08-12 | 2013-09-06 | 10 | 218d | 0d |  | Java разработчик | 160h |
| 54 | 1.4.4.6 | Подготовка отчетов |  | 20d | 2013-09-09 | 2013-10-04 | 10, 40, 53 | 218d |  |  | Java разработчик | 160h |
| 55 | 1.4.5 | **Тестирование** |  | 68d? | 2013-08-12 | 2013-11-13 | 10 | 66d | 0d |  |  | 2648h |
| 56 | 1.4.5.1 | **Функциональное тестирование** |  | 53d? | 2013-08-12 | 2013-10-23 |  | 66d |  |  |  | 2024h |
| 57 | 1.4.5.1.1 | Подготовка ПМИ |  | 5d | 2013-08-12 | 2013-08-16 |  | 2d | 0d |  | Тест Аналитик | 40h |
| 58 | 1.4.5.1.2 | Разработка "сценариев тестирования" |  | 15d | 2013-08-12 | 2013-08-30 |  | 2d | 0d |  | Тест Аналитик | 120h |
| 59 | 1.4.5.1.3 | Разработка модели нагрузки для тестирования |  | 10d | 2013-08-19 | 2013-08-30 | 57 | 2d | 0d |  | Тест Аналитик | 80h |
| 60 | 1.4.5.1.4 | **Проведение тестирования** |  | 38d? | 2013-09-02 | 2013-10-23 | 58, 59 | 66d |  |  |  | 1784h |
| 61 | 1.4.5.1.4.1 | **Подготовка среды тестирования** |  | 15d? | 2013-09-02 | 2013-09-20 |  | 66d |  |  |  | 200h |
| 62 | 1.4.5.1.4.1.1 | Разворачивание системы |  | 5d? | 2013-09-02 | 2013-09-06 |  | 2d | 0d |  | Java разработчик | 40h |
| 63 | 1.4.5.1.4.1.2 | Наполнение данными |  | 10d? | 2013-09-09 | 2013-09-20 | 62 | 2d | 0d |  | Java разработчик; Java разработчик6 | 160h |
| 64 | 1.4.5.1.4.2 | Среда тестирования готова | milestone | 0d | 2013-09-20 | 2013-09-20 | 63 | 2d | 0d | start no earlier than 2012-05-24 |  |  |
| 65 | 1.4.5.1.4.3 | Проведение тестирования |  | 10d | 2013-09-23 | 2013-10-04 | 64 | 2d | 0d |  | Тест Аналитик; Тестировщик [200%] | 240h |

| ID | WBS | Task | Type | Duration | Start | Finish | Predecessors | Total slack | Free slack | Constraint | Resources | Work |
| --- | --- | --- | --- | --- | --- | --- | --- | --- | --- | --- | --- | --- |
| 66 | 1.4.5.1.4.4 | **Обработка результатов тестирования и внесение изменений в модуль** |  | 15d | 2013-10-03 | 2013-10-23 | 65FS-2d | 66d |  |  |  | 1344h |
| 67 | 1.4.5.1.4.4.1 | Устранение замечаний по результатам функционального тестирования |  | 15d | 2013-10-03 | 2013-10-23 |  | 66d | 0d |  | Java разработчик5; Java разработчик [300%]; Валерий Мацукевич; Java разработчик3; Java разработчик4; Java разработчик2; Java разработчик1; Андрей Цветков | 1200h |
| 68 | 1.4.5.1.4.4.2 | Проверка устранения замечаний |  | 6d | 2013-10-16 | 2013-10-23 | 67FS-6d | 4d | 0d |  | Тест Аналитик; Тестировщик [200%] | 144h |
| 69 | 1.4.5.2 | **Нагрузочное тестирование** |  | 63d | 2013-08-19 | 2013-11-13 | 57 | 66d | 0d |  |  | 624h |
| 70 | 1.4.5.2.1 | Адаптация автоматизированных сценариев для создания нагрузки от СМ4 |  | 38d | 2013-08-19 | 2013-10-09 |  | 14d | 10d |  | Java разработчик | 304h |
| 71 | 1.4.5.2.2 | Стенд для нагрузочного тестирования подготовлен | milestone | 0d | 2013-10-04 | 2013-10-04 | 65 | 17d | 13d | finish no earlier than 2012-06-09 |  |  |
| 72 | 1.4.5.2.3 | Проведения нагрузочного тестирования |  | 10d | 2013-10-24 | 2013-11-06 | 68, 70, 71 | 4d | 0d |  | Java разработчик; Тест Аналитик; Тестировщик | 240h |
| 73 | 1.4.5.2.4 | Обработка результатов нагрузочного тестирования |  | 5d | 2013-11-07 | 2013-11-13 | 72 | 4d |  |  | Тест Аналитик; Тестировщик | 80h |
| 74 | 1.4.6 | Разработка модуля "Делопроизводство" завершена | milestone | 0d | 2013-11-13 | 2013-11-13 | 55 | 168d | 0d |  |  |  |
| 75 | 1.4.7 | **Подготовка документации** |  | 40d | 2013-08-12 | 2013-10-04 | 55SS | 67d |  |  |  | 320h |
| 76 | 1.4.7.1 | Разработка документа "Концепция системы " |  | 20d | 2013-08-12 | 2013-09-06 |  | 67d | 0d |  | Владимир Панов | 160h |
| 77 | 1.4.7.2 | Разработка "Software Architecture Document" |  | 20d | 2013-09-09 | 2013-10-04 | 76 | 67d | 0d |  | Владимир Панов | 160h |
| 78 | 1.4.7.3 | Документы подготовлены | milestone | 0d | 2013-10-04 | 2013-10-04 | 77 | 67d | 0d |  |  |  |
| 79 | 1.5 | **Проверка работоспособности решения - Организация демонстрации** |  | 28d? | 2013-11-06 | 2013-12-13 |  | 102d |  |  |  | 448h |
| 80 | 1.5.1 | Подготовка стенда |  | 3d | 2013-11-06 | 2013-11-11 | 81SF | 127d |  |  | Java разработчик; Аналитик | 48h |
| 81 | 1.5.2 | Подготовка прототипа |  | 20d? | 2013-11-11 | 2013-12-06 | 74FS-3d | 102d | 0d |  | Java разработчик; Аналитик | 320h |
| 82 | 1.5.3 | Проведение демонстраций |  | 3d | 2013-12-09 | 2013-12-11 | 74SF, 81 | 168d | 0d |  | Java разработчик; Аналитик | 48h |
| 83 | 1.5.4 | Анализ результатов - выводы |  | 2d | 2013-12-12 | 2013-12-13 | 82 | 168d |  |  | Java разработчик; Аналитик | 32h |
| 84 | 1.6 | **Создание модулей первой очереди** |  | 86d? | 2013-10-04 | 2014-02-03 |  | 66d |  |  |  | 8408h |
| 85 | 1.6.1 | Определен состав модулей первой очереди и первичные требования подготовлены | milestone | 0d | 2013-10-04 | 2013-10-04 | 78 | 67d | 0d | finish no earlier than 2012-04-02 |  |  |
| 86 | 1.6.2 | **Проектирование** |  | 15d | 2013-10-07 | 2013-10-25 | 85 | 67d | 0d |  |  | 480h |
| 87 | 1.6.2.1 | Определение структуры модулей первой очереди |  | 13d | 2013-10-07 | 2013-10-23 | 38 | 67d | 0d |  | Андрей Пирожков; Тугушев Илья; Денис Митавский; WEB-дизайнер | 416h |
| 88 | 1.6.2.2 | Уточнение состава и сроков работ |  | 2d | 2013-10-24 | 2013-10-25 | 87 | 67d |  |  | Тугушев Илья; Андрей Пирожков; Денис Митавский; WEB-дизайнер | 64h |
| 89 | 1.6.3 | Принято решение о разработке модулей второй очереди | milestone | 0d | 2013-10-23 | 2013-10-23 | 67, 87 | 2d | 0d | finish no earlier than 2012-05-21 |  |  |

| ID | WBS | Task | Type | Duration | Start | Finish | Predecessors | Total slack | Free slack | Constraint | Resources | Work |
| --- | --- | --- | --- | --- | --- | --- | --- | --- | --- | --- | --- | --- |
| 90 | 1.6.4 | **Разработка** |  | 42d | 2013-10-24 | 2013-12-20 | 89 | 69d |  |  |  | 5120h |
| 91 | 1.6.4.1 | Контроль и корректировка технических решений "Архитектурный комитет" |  | 40d | 2013-10-24 | 2013-12-18 |  | 165d | 17d |  | Тугушев Илья; Андрей Пирожков; Денис Митавский; WEB-дизайнер | 1280h |
| 92 | 1.6.4.2 | **Разработка серверной логики модулей первой очереди** |  | 40d | 2013-10-24 | 2013-12-18 |  | 69d | 2d |  |  | 1600h |
| 93 | 1.6.4.2.1 | Разработка схем документов для модулей первой очереди |  | 20d | 2013-10-24 | 2013-11-20 |  | 2d | 0d |  | Java разработчик2; Java разработчик | 320h |
| 94 | 1.6.4.2.2 | Разработка ЖЦ процессов (WF) |  | 20d | 2013-11-21 | 2013-12-18 | 93 | 2d |  |  | Java разработчик2; Java разработчик | 320h |
| 95 | 1.6.4.2.3 | Разработка логики бизнес- действий для модулей первой очереди |  | 40d | 2013-10-24 | 2013-12-18 |  | 2d |  |  | Java разработчик1; Java разработчик | 640h |
| 96 | 1.6.4.2.4 | Разработка процессов автоматизации для модулей первой очереди |  | 20d | 2013-10-24 | 2013-11-20 |  | 22d |  |  | Java разработчик | 160h |
| 97 | 1.6.4.2.5 | Разработка модели прав доступа (контекстные роли) |  | 20d | 2013-11-21 | 2013-12-18 | 93 | 2d |  |  | Java разработчик | 160h |
| 98 | 1.6.4.3 | **Разработка клиентской логики модулей первой очереди** |  | 40d | 2013-10-24 | 2013-12-18 |  | 69d | 2d |  |  | 640h |
| 99 | 1.6.4.3.1 | Разработка форм для работы с документами в GUI (настройки форм) |  | 20d | 2013-10-24 | 2013-11-20 |  | 22d |  |  | Java разработчик3 | 160h |
| 100 | 1.6.4.3.2 | Разработка структуры рабочего места |  | 20d | 2013-11-21 | 2013-12-18 | 93 | 2d |  |  | Java разработчик3 | 160h |
| 101 | 1.6.4.3.3 | Разработка специфичных для модуля форм элементов GUI |  | 40d | 2013-10-24 | 2013-12-18 |  | 2d |  |  | Java разработчик4 | 320h |
| 102 | 1.6.4.4 | **Разработка вспомогательного инструментария** |  | 40d | 2013-10-28 | 2013-12-20 |  | 67d | 0d |  |  | 1280h |
| 103 | 1.6.4.4.1 | Построитель форм |  | 40d | 2013-10-28 | 2013-12-20 | 86 | 67d |  |  | Андрей Цветков | 320h |
| 104 | 1.6.4.4.2 | Разработка инсталлятора |  | 40d | 2013-10-28 | 2013-12-20 | 86 | 67d |  |  | Валерий Мацукевич | 320h |
| 105 | 1.6.4.4.3 | Разработка конфигуратора |  | 40d | 2013-10-28 | 2013-12-20 | 86 | 67d |  |  | Java разработчик5; Java разработчик | 640h |
| 106 | 1.6.4.5 | Подготовка отчетов |  | 40d | 2013-10-24 | 2013-12-18 |  | 165d |  |  | Java разработчик | 320h |
| 107 | 1.6.5 | Сборка модулей первой очереди завершена | milestone | 0d | 2013-12-20 | 2013-12-20 | 92, 98, 102 | 67d | 0d |  |  |  |
| 108 | 1.6.6 | **Тестирование** |  | 58d? | 2013-11-14 | 2014-02-03 | 69 | 66d | 0d |  |  | 2648h |
| 109 | 1.6.6.1 | **Функциональное тестирование** |  | 42d? | 2013-11-14 | 2014-01-10 |  | 66d |  |  |  | 2024h |
| 110 | 1.6.6.1.1 | Подготовка ПМИ |  | 5d | 2013-11-14 | 2013-11-20 |  | 132d | 0d |  | Тест Аналитик | 40h |
| 111 | 1.6.6.1.2 | Разработка "сценариев тестирования" |  | 15d | 2013-11-14 | 2013-12-04 |  | 4d | 0d |  | Тест Аналитик | 120h |
| 112 | 1.6.6.1.3 | Разработка модели нагрузки для тестирования |  | 10d | 2013-11-21 | 2013-12-04 | 110 | 175d |  |  | Тест Аналитик | 80h |
| 113 | 1.6.6.1.4 | **Проведение тестирования** |  | 42d? | 2013-11-14 | 2014-01-10 |  | 67d |  |  |  | 1784h |
| 114 | 1.6.6.1.4.1 | **Подготовка среды тестирования** |  | 15d? | 2013-11-14 | 2013-12-04 |  | 71d |  |  |  | 200h |
| 115 | 1.6.6.1.4.1.1 | Разворачивание системы |  | 5d? | 2013-11-14 | 2013-11-20 |  | 4d | 0d |  | Java разработчик | 40h |
| 116 | 1.6.6.1.4.1.2 | Наполнение данными |  | 10d? | 2013-11-21 | 2013-12-04 | 115 | 4d | 0d |  | Java разработчик; Java разработчик6 | 160h |
| 117 | 1.6.6.1.4.2 | Среда тестирования готова | milestone | 0d | 2013-12-04 | 2013-12-04 | 111, 116 | 4d | 0d | finish no earlier than 2012-06-09 |  |  |
| 118 | 1.6.6.1.4.3 | Проведение тестирования |  | 10d | 2013-12-05 | 2013-12-18 | 117 | 4d | 0d |  | Тест Аналитик; Тестировщик [200%] | 240h |

| ID | WBS | Task | Type | Duration | Start | Finish | Predecessors | Baseline start | Baseline finish | Baseline duration | Total slack | Free slack | Constraint | Resources | Work | Baseline cost |
| --- | --- | --- | --- | --- | --- | --- | --- | --- | --- | --- | --- | --- | --- | --- | --- | --- |
| 119 | 1.6.6.1.4.4 | **Обработка результатов тестирования и внесение изменений в модуль** |  | 15d | 2013-12-23 | 2014-01-10 | 107, 118FS-2d |  |  |  | 67d |  |  |  | 1344h |  |
| 120 | 1.6.6.1.4.4.1 | Устранение замечаний по результатам функционального тестирования |  | 15d | 2013-12-23 | 2014-01-10 |  |  |  |  | 67d | 0d |  | Java разработчик5; Java разработчик [300%]; Валерий Мацукевич; Java разработчик3; Java разработчик4; Java разработчик2; Java разработчик1; Андрей Цветков | 1200h |  |
| 121 | 1.6.6.1.4.4.2 | Проверка устранения замечаний |  | 6d | 2014-01-03 | 2014-01-10 | 120FS-6d |  |  |  | 22d | 0d |  | Тест Аналитик; Тестировщик [200%] | 144h |  |
| 122 | 1.6.6.2 | **Нагрузочное тестирование** |  | 53d | 2013-11-21 | 2014-02-03 | 110 |  |  |  | 66d |  |  |  | 624h |  |
| 123 | 1.6.6.2.1 | Подготовка автоматизированных сценариев для создания нагрузки |  | 38d | 2013-11-21 | 2014-01-13 |  |  |  |  | 132d | 0d |  | Java разработчик | 304h |  |
| 124 | 1.6.6.2.2 | Стенд для нагрузочного тестирования подготовлен | milestone | 0d | 2013-12-18 | 2013-12-18 | 118 |  |  |  | 150d | 18d | finish no earlier than 2012-06-09 |  |  |  |
| 125 | 1.6.6.2.3 | Проведения нагрузочного тестирования |  | 10d | 2014-01-14 | 2014-01-27 | 121, 123, 124 |  |  |  | 132d | 0d |  | Java разработчик; Тест Аналитик; Тестировщик | 240h |  |
| 126 | 1.6.6.2.4 | Обработка результатов нагрузочного тестирования |  | 5d | 2014-01-28 | 2014-02-03 | 125 |  |  |  | 132d |  |  | Тест Аналитик; Тестировщик | 80h |  |
| 127 | 1.6.7 | Разработка модулей первой очереди завершена | milestone | 0d | 2014-02-03 | 2014-02-03 | 108 |  |  |  | 132d |  |  |  |  |  |
| 128 | 1.6.8 | **Подготовка документации** |  | 42d | 2013-11-14 | 2014-01-10 | 108SS |  |  |  | 82d |  |  |  | 160h |  |
| 129 | 1.6.8.1 | Разработка "Software Architecture Document" для модулей первой очереди |  | 20d | 2013-11-14 | 2013-12-11 |  |  |  |  | 104d | 22d |  | Технический писатель | 160h |  |
| 130 | 1.6.8.2 | Документы подготовлены | milestone | 0d | 2014-01-10 | 2014-01-10 | 121, 129 |  |  |  | 82d |  |  |  |  |  |
| 131 | 1.7 | **Подготовка документации для тиражирования CM5 v2** |  | 244d? | 2013-04-22 | 2014-04-03 | 2 | 2012-02-02 | 2012-03-30 | 0d? | 23d |  |  |  | 4071.6h | 342,000 |
| 132 | 1.7.1 | Подготовка стенда для документирования |  | 5d? | 2013-04-22 | 2013-04-26 |  | 2012-02-02 | 2012-02-08 | 5d? | 23d | 0d | start no earlier than 2012-02-02 | Технолог - администратор | 40h | 15,000 |
| 133 | 1.7.2 | Подготовка документации по обновленному функционалу BR4J (регионалка) |  | 19d | 2013-04-29 | 2013-05-30 | 132 | 2012-02-02 | 2012-02-28 | 18d? | 23d | 0d | start no earlier than 2012-02-06 | Технический писатель2 [50%]; Системный аналитик1 [50%] | 168h | 85,000 |
| 134 | 1.7.3 | **Описание функциональных особенностей системы** |  | 220d? | 2013-05-31 | 2014-04-03 | 133 | 2012-02-29 | 2012-03-30 | 0d? | 23d |  |  | Технический писатель2; Системный аналитик1; Системный аналитик2 [50%]; Системный аналитик3 [50%] | 3863.6h | 242,000 |
| 135 | 1.7.3.1 | Подготовка спецификации |  | 22d | 2013-05-31 | 2013-07-01 |  |  |  |  | 23d | 0d |  | Системный аналитик2; Системный аналитик3 [50%]; Системный аналитик4 [50%] | 274h |  |
| 136 | 1.7.3.2 | Подготовка описания типового функционала |  | 3.5d | 2013-07-02 | 2013-07-05 | 135 |  |  |  | 23d | 0d |  | Системный аналитик2 [50%]; Системный аналитик3 [50%]; Системный аналитик4 [50%] | 32h |  |
| 137 | 1.7.3.3 | Подготовка описания типового функционала |  | 10d | 2013-07-08 | 2013-07-19 | 136 |  |  |  | 207d |  |  | Системный аналитик2; Системный аналитик4 [20%] | 96h |  |
| 138 | 1.7.3.4 | **Подготовка руководства по администрированию и установке** |  | 220d? | 2013-05-31 | 2014-04-03 |  |  |  |  | 23d |  |  |  | 3041.6h |  |
| 139 | 1.7.3.4.1 | Подготовка руководства администратора |  | 7d | 2013-05-31 | 2013-06-10 |  |  |  |  | 49d | 0d |  | Системный аналитик1 | 56h |  |
| 140 | 1.7.3.4.2 | Подготовка руководства по установке |  | 7d | 2013-06-11 | 2013-06-19 | 139 |  |  |  | 49d | 26d |  | Системный аналитик1 | 56h |  |
| 141 | 1.7.3.4.3 | Консультирование по вопросам администрирования и установке стенда |  | 14d | 2013-07-08 | 2013-07-25 | 136 |  |  |  | 23d | 0d |  | Технолог - администратор [50%] | 56h |  |
| 142 | 1.7.3.4.4 | Рецензирование руководства администратора и руководства по установке |  | 2d | 2013-07-26 | 2013-07-29 | 140, 141 |  |  |  | 23d | 0d |  | Технический писатель2 | 16h |  |
| 143 | 1.7.3.4.5 | Проверка комплектности |  | 1d | 2013-07-30 | 2013-07-30 | 142 |  |  |  | 200d |  |  | Системный аналитик1 | 8h |  |
| 144 | 1.7.3.4.6 | Поддержка и сопровождение работы стенда |  | 50d | 2013-05-31 | 2013-08-08 |  |  |  |  | 193d |  |  | Технолог - администратор [10%] | 40h |  |
| 145 | 1.7.3.4.7 | Подготовка описания функционала |  | 21d? | 2013-07-30 | 2013-08-27 | 142 |  |  |  | 23d | 0d |  | Системный аналитик2; Системный аналитик1 | 336h |  |
| 146 | 1.7.3.4.8 | Разработка «Программа и методика испытаний (ПМИ)» |  | 21d? | 2013-08-28 | 2013-09-25 | 145 |  |  |  | 23d | 0d |  | Системный аналитик2; Системный аналитик1 | 336h |  |
| 147 | 1.7.3.4.9 | Рецензирование руководств |  | 15d | 2013-09-05 | 2013-09-25 | 145, 146FF |  |  |  | 23d | 0d |  |  |  |  |

| ID | WBS | Task | Duration | Start | Finish | Predecessors | Total slack | Free slack | Resources | Work |
| --- | --- | --- | --- | --- | --- | --- | --- | --- | --- | --- |
| 148 | 1.7.3.4.10 | **Эксплуатационная документация** | 107d? | 2013-09-26 | 2014-02-21 | 147 | 23d |  |  | 1880h |
| 149 | 1.7.3.4.10.1 | Разработка «Руководство по установке» (РУ) | 21d | 2013-09-26 | 2013-10-24 |  | 23d | 0d | Системный аналитик2; Системный аналитик1 | 336h |
| 150 | 1.7.3.4.10.2 | Разработка «Руководство пользователя» (РП) | 21d? | 2013-10-25 | 2013-11-22 | 149 | 23d | 0d | Системный аналитик2; Системный аналитик1 | 336h |
| 151 | 1.7.3.4.10.3 | Разработка «Руководство по администрированию» (РА ) | 23d | 2013-11-25 | 2013-12-25 | 150 | 23d | 0d | Системный аналитик2; Системный аналитик1 | 368h |
| 152 | 1.7.3.4.10.4 | Рецензирование руководств | 15d | 2013-12-05 | 2013-12-25 | 150, 151FF | 23d | 0d |  |  |
| 153 | 1.7.3.4.10.5 | Доработка РП, РА, РУ | 11d | 2013-12-26 | 2014-01-09 | 152 | 23d | 0d | Технический писатель2; Системный аналитик2; Системный аналитик1 | 264h |
| 154 | 1.7.3.4.10.6 | **Разработка инструкций** | 31d? | 2014-01-10 | 2014-02-21 | 153 | 23d |  |  | 576h |
| 155 | 1.7.3.4.10.6.1 | Разработка инструкций по типам документов | 21d? | 2014-01-10 | 2014-02-07 |  | 23d | 0d | Системный аналитик2 | 168h |
| 156 | 1.7.3.4.10.6.2 | Разработка инструкций по ролям | 21d? | 2014-01-10 | 2014-02-07 |  | 23d | 0d | Системный аналитик1 | 168h |
| 157 | 1.7.3.4.10.6.3 | Разработка инструкции по работе в АРМ (общая и по ролям) | 10d? | 2014-02-10 | 2014-02-21 | 155, 156 | 23d | 0d | Системный аналитик2; Системный аналитик1 | 160h |
| 158 | 1.7.3.4.10.6.4 | Рецензирование инструкций | 10d? | 2014-02-10 | 2014-02-21 | 157FF | 23d | 0d | Технический писатель2 | 80h |
| 159 | 1.7.3.4.11 | **Технологическая документация** | 13d | 2014-02-24 | 2014-03-12 | 158 | 23d |  |  | 104h |
| 160 | 1.7.3.4.11.1 | Разработка «Описание архитектуры системы» | 10d | 2014-02-24 | 2014-03-07 |  | 23d | 0d | Системный аналитик2 | 80h |
| 161 | 1.7.3.4.11.2 | Форматирование «Описание архитектуры системы» | 3d | 2014-03-10 | 2014-03-12 | 160 | 23d | 0d | Системный аналитик2 | 24h |
| 162 | 1.7.3.4.12 | **Внедренческая документация** | 16d? | 2014-03-13 | 2014-04-03 | 161 | 23d |  |  | 153.6h |
| 163 | 1.7.3.4.12.1 | Разработка типового ТКП | 10d? | 2014-03-13 | 2014-03-26 |  | 23d | 0d | Технический писатель2 [20%]; Системный аналитик2 | 96h |
| 164 | 1.7.3.4.12.2 | Разработка типового ТЗ | 6d? | 2014-03-27 | 2014-04-03 | 163 | 23d |  | Системный аналитик2; Технический писатель2 [20%] | 57.6h |
